# AWS to GCP Migration

Schedule from MS Project, 2021-05-03 to 2021-08-04.

## Calendars

- Standard: Mon-Fri 08:00-12:00, 13:00-17:00; Sat-Sun off.

## Resources

| Resource |
| --- |
| Project Sponsor |
| Enterprise Architect |
| Developer |
| Testers |
| Technical Staff |
| Functional Manager |

## Schedule

| ID | WBS | Task | Type | Duration | Start | Finish | Predecessors | Total slack | Free slack | Constraint | Resources | Work |
| --- | --- | --- | --- | --- | --- | --- | --- | --- | --- | --- | --- | --- |
| 1 | 1 | **Scope** |  | 4.5d | 2021-05-03 08:00 | 2021-05-07 12:00 |  | 63d |  |  |  | 30h |
| 2 | 1.1 | Conduct needs analysis |  | 4h | 2021-05-03 08:00 | 2021-05-03 12:00 |  | 44d |  |  | Enterprise Architect | 4h |
| 3 | 1.2 | Identify stakeholder needs, influence on project |  | 4h | 2021-05-03 08:00 | 2021-05-03 12:00 |  | 44d |  |  | Enterprise Architect | 4h |
| 4 | 1.3 | Determine project scope |  | 2h | 2021-05-04 08:00 | 2021-05-04 10:00 |  | 42.12d | 0d | start no earlier than 2021-05-04 08:00 | Enterprise Architect | 2h |
| 5 | 1.4 | Develop a proposal |  | 4h | 2021-05-04 10:00 | 2021-05-04 15:00 | 4 | 42.12d | 1.25d |  | Enterprise Architect | 4h |
| 6 | 1.5 | Define preliminary resources |  | 2h | 2021-05-05 08:00 | 2021-05-05 10:00 |  | 41.62d | 0.75d | start no earlier than 2021-05-05 08:00 | Enterprise Architect | 2h |
| 7 | 1.6 | Secure project sponsorship |  | 1h | 2021-05-06 08:00 | 2021-05-06 09:00 | 5, 6 | 40.88d | 0.88d | start no earlier than 2021-05-06 08:00 | Enterprise Architect; Project Sponsor | 2h |
| 8 | 1.7 | Secure core resources |  | 4h | 2021-05-07 08:00 | 2021-05-07 12:00 | 7 | 40d |  | start no earlier than 2021-05-07 08:00 | Enterprise Architect; Functional Manager; Project Sponsor | 12h |
| 9 | 1.8 | Scope complete | milestone | 0d | 2021-05-07 08:00 | 2021-05-07 08:00 | 7 | 40.5d |  | start no earlier than 2021-05-07 08:00 |  |  |
| 10 | 2 | **Concept** |  | 8d? | 2021-05-10 08:00 | 2021-05-19 17:00 |  |  |  |  |  | 57h |
| 11 | 2.1 | Identify security and compliance requirements |  | 2h | 2021-05-10 08:00 | 2021-05-10 10:00 |  | 62.25d |  |  | Enterprise Architect; Project Sponsor | 4h |
| 12 | 2.2 | Create governance workbook |  | 3h | 2021-05-10 08:00 | 2021-05-10 11:00 |  | 62.12d |  |  | Enterprise Architect; Project Sponsor | 6h |
| 13 | 2.3 | **Draft preliminary architecture specifications** |  | 2d? | 2021-05-11 08:00 | 2021-05-12 17:00 |  |  |  |  |  | 16h |
| 14 | 2.3.1 | Identify all the application environments |  | 2h | 2021-05-11 08:00 | 2021-05-11 10:00 |  | 61.25d |  |  | Enterprise Architect | 2h |
| 15 | 2.3.2 | Perform application walkthroughs |  | 1h | 2021-05-11 08:00 | 2021-05-11 09:00 |  | 61.38d |  |  | Enterprise Architect; Technical Staff | 2h |
| 16 | 2.3.3 | Establish pre-migration performance baseline in AWS CloudWatch dashboard |  | 4h | 2021-05-11 08:00 | 2021-05-11 12:00 |  | 61d |  |  | Enterprise Architect | 4h |
| 17 | 2.3.4 | Determine options for google cloud services |  | 5h | 2021-05-12 08:00 | 2021-05-12 14:00 |  | 36.88d |  | start no earlier than 2021-05-12 08:00 | Enterprise Architect | 5h |
| 18 | 2.3.5 | Identify application integration requirements |  | 3h | 2021-05-12 08:00 | 2021-05-12 11:00 |  | 37.12d |  | start no earlier than 2021-05-12 08:00 | Enterprise Architect | 3h |
| 19 | 2.4 | **Define Migration Approach** |  | 2d | 2021-05-13 08:00 | 2021-05-14 17:00 |  |  |  |  |  | 15h |
| 20 | 2.4.1 | Perform deployment assessment |  | 3h | 2021-05-13 08:00 | 2021-05-13 11:00 |  | 59.12d |  |  | Enterprise Architect | 3h |
| 21 | 2.4.2 | Identify data that does not require migration - purge/archive based on retention policies |  | 3h | 2021-05-13 08:00 | 2021-05-13 11:00 |  | 59.12d |  |  | Enterprise Architect | 3h |
| 22 | 2.4.3 | Identify data that requires cleanup for integrity |  | 2h | 2021-05-13 08:00 | 2021-05-13 10:00 |  | 59.25d |  |  | Enterprise Architect | 2h |
| 23 | 2.4.4 | Define migration phases |  | 3h | 2021-05-14 08:00 | 2021-05-14 11:00 |  | 66.38d |  | start no earlier than 2021-05-14 08:00 | Enterprise Architect | 3h |
| 24 | 2.4.5 | Define data migration approach |  | 3h | 2021-05-14 08:00 | 2021-05-14 11:00 |  | 66.38d |  | start no earlier than 2021-05-14 08:00 | Enterprise Architect | 3h |
| 25 | 2.4.6 | Identify production cutover window |  | 1h | 2021-05-14 08:00 | 2021-05-14 09:00 |  | 66.62d |  | start no earlier than 2021-05-14 08:00 | Enterprise Architect | 1h |
| 26 | 2.5 | Perform cost benefit analysis |  | 4h | 2021-05-17 08:00 | 2021-05-17 12:00 |  | 65.19d | 0d | start no earlier than 2021-05-17 08:00 | Enterprise Architect | 4h |
| 27 | 2.6 | Recommend an option and obtain approvals |  | 0.5h | 2021-05-17 13:00 | 2021-05-17 13:30 | 26 | 65.19d |  | start no earlier than 2021-05-13 08:00 | Enterprise Architect; Project Sponsor | 1h |
| 28 | 2.7 | Scope all deliverables, objectives, quality, cost |  | 4h | 2021-05-18 08:00 | 2021-05-18 12:00 |  | 0.12d |  | start no earlier than 2021-05-18 08:00 | Enterprise Architect | 4h |
| 29 | 2.8 | Establish organization structure |  | 1h | 2021-05-18 08:00 | 2021-05-18 09:00 |  | 64.62d |  | start no earlier than 2021-05-18 08:00 | Enterprise Architect; Functional Manager | 2h |
| 30 | 2.9 | Define progress reporting - status reports, burndown, interdependency, schedule/plan |  | 2h | 2021-05-18 08:00 | 2021-05-18 10:00 |  | 64.5d |  | start no earlier than 2021-05-18 08:00 | Enterprise Architect | 2h |
| 31 | 2.10 | Develop a project charter |  | 3h | 2021-05-19 08:00 | 2021-05-19 11:00 | 28 | -0.38d | 0d | start no earlier than 2021-05-19 08:00 | Enterprise Architect | 3h |

| ID | WBS | Task | Type | Duration | Start | Finish | Predecessors | Total slack | Free slack | Constraint | Resources | Work |
| --- | --- | --- | --- | --- | --- | --- | --- | --- | --- | --- | --- | --- |
| 32 | 3 | **Planning** |  | 5d | 2021-05-19 08:00 | 2021-05-25 17:00 | 31 |  |  |  |  | 25h |
| 33 | 3.1 | **Project Plan** |  | 1.38d | 2021-05-19 08:00 | 2021-05-20 11:00 |  |  |  |  |  | 13h |
| 34 | 3.1.1 | Review architecture specifications/budget with team |  | 2h | 2021-05-19 08:00 | 2021-05-19 10:00 |  | 55.12d | 0d | start no earlier than 2021-05-19 08:00 | Enterprise Architect; Developer | 4h |
| 35 | 3.1.2 | Incorporate feedback on architecture specifications |  | 1h | 2021-05-19 10:00 | 2021-05-19 11:00 | 34 | 55.12d |  | start no earlier than 2021-05-19 08:00 | Enterprise Architect | 1h |
| 36 | 3.1.3 | Define milestones and high level tasks |  | 1h | 2021-05-19 08:00 | 2021-05-19 09:00 |  | 55.38d |  | start no earlier than 2021-05-19 08:00 | Enterprise Architect | 1h |
| 37 | 3.1.4 | Define responsibilties for team members |  | 1h | 2021-05-19 08:00 | 2021-05-19 09:00 |  | 55.38d |  | start no earlier than 2021-05-19 08:00 | Enterprise Architect | 1h |
| 38 | 3.1.5 | Assign resources to tasks, revise schedule depending on availability |  | 3h | 2021-05-20 08:00 | 2021-05-20 11:00 |  | 62.38d |  | start no earlier than 2021-05-20 08:00 | Enterprise Architect | 3h |
| 39 | 3.1.6 | Develop preliminary budget |  | 3h | 2021-05-20 08:00 | 2021-05-20 11:00 |  | 62.38d |  | start no earlier than 2021-05-20 08:00 | Enterprise Architect | 3h |
| 40 | 3.2 | **Delivery and mitigation plan** |  | 2d | 2021-05-21 08:00 | 2021-05-24 17:00 |  |  |  |  |  | 10h |
| 41 | 3.2.1 | Define test plans for unit, integration and performance testing |  | 2h | 2021-05-21 08:00 | 2021-05-21 10:00 |  | 52.88d | 0.88d |  | Enterprise Architect | 2h |
| 42 | 3.2.2 | Define rollout plan |  | 3h | 2021-05-21 08:00 | 2021-05-21 11:00 |  | 52.75d | 0.75d |  | Enterprise Architect | 3h |
| 43 | 3.2.3 | Identify risks, probability and impact |  | 2h | 2021-05-21 08:00 | 2021-05-21 10:00 |  | 52.88d | 0.88d |  | Enterprise Architect | 2h |
| 44 | 3.2.4 | Define rollback strategy |  | 1h | 2021-05-21 08:00 | 2021-05-21 09:00 |  | 53d | 1d |  | Enterprise Architect | 1h |
| 45 | 3.2.5 | Develop delivery timeline |  | 1h | 2021-05-24 08:00 | 2021-05-24 09:00 |  | 60.25d | 0d | start no earlier than 2021-05-24 08:00 | Enterprise Architect | 1h |
| 46 | 3.2.6 | Prepare transition readiness plan |  | 1h | 2021-05-24 08:00 | 2021-05-24 09:00 |  | 60.62d |  | start no earlier than 2021-05-24 08:00 | Enterprise Architect | 1h |
| 47 | 3.3 | Obtain approvals to proceed (concept, timeline, budget) | milestone | 0h | 2021-05-24 09:00 | 2021-05-24 09:00 | 41, 42, 43, 44, 45 | 60.25d | 0d | start no earlier than 2021-05-24 08:00 | Project Sponsor; Enterprise Architect |  |
| 48 | 3.4 | Set up recurring business meetings |  | 1h | 2021-05-24 09:00 | 2021-05-24 10:00 | 47 | 60.5d |  | start no earlier than 2021-05-24 08:00 | Enterprise Architect | 1h |
| 49 | 3.5 | Secure required resources |  | 1h | 2021-05-24 08:00 | 2021-05-24 09:00 |  | 60.62d |  | start no earlier than 2021-05-24 08:00 | Enterprise Architect | 1h |
| 50 | 3.6 | Planning complete | milestone | 0d | 2021-05-24 08:00 | 2021-05-24 08:00 |  | 29.5d |  | start no earlier than 2021-05-24 08:00 |  |  |
| 51 | 4 | Hold Kick-Off |  | 2h | 2021-05-31 08:00 | 2021-05-31 10:00 | 47 | 24.25d |  | start no earlier than 2021-05-31 08:00 | Developer; Enterprise Architect; Functional Manager; Project Sponsor | 8h |
| 52 | 5 | **Design** |  | 3d | 2021-05-31 08:00 | 2021-06-02 17:00 |  |  |  |  |  | 27h |
| 53 | 5.1 | Acquire access to current applications, data stores, and services |  | 3h | 2021-05-31 08:00 | 2021-05-31 11:00 | 47 | 47.12d |  |  | Enterprise Architect; Functional Manager; Technical Staff | 9h |
| 54 | 5.2 | Set up a Google Cloud account, organization, and infrastructure project |  | 2h | 2021-05-31 08:00 | 2021-05-31 10:00 |  | 47.25d |  |  | Developer | 2h |
| 55 | 5.3 | Create cloud source repositories |  | 2h | 2021-05-31 08:00 | 2021-05-31 10:00 |  | 47.25d |  |  | Developer | 2h |

| ID | WBS | Task | Type | Duration | Start | Finish | Predecessors | Total slack | Free slack | Constraint | Resources | Work |
| --- | --- | --- | --- | --- | --- | --- | --- | --- | --- | --- | --- | --- |
| 56 | 5.4 | **Review preliminary architecture specifications** |  | 2d | 2021-06-01 08:00 | 2021-06-02 17:00 |  |  |  |  |  | 10h |
| 57 | 5.4.1 | Create a prioritized inventory of the migration components |  | 1h | 2021-06-01 08:00 | 2021-06-01 09:00 |  | 46.38d |  |  | Enterprise Architect | 1h |
| 58 | 5.4.2 | Identify requirements for connectivity - VPN, VPC, Peering |  | 4h | 2021-06-01 08:00 | 2021-06-01 12:00 |  | 46d |  |  | Enterprise Architect | 4h |
| 59 | 5.4.3 | Develop functional specifications |  | 2h | 2021-06-02 08:00 | 2021-06-02 10:00 |  | 53.5d |  | start no earlier than 2021-06-02 08:00 | Enterprise Architect | 2h |
| 60 | 5.4.4 | Review functional specifications |  | 1h | 2021-06-02 08:00 | 2021-06-02 09:00 |  | 53.62d |  | start no earlier than 2021-06-02 08:00 | Enterprise Architect; Developer | 2h |
| 61 | 5.4.5 | Incorporate feedback into functional specifications |  | 1h | 2021-06-02 08:00 | 2021-06-02 09:00 |  | 53.62d |  | start no earlier than 2021-06-02 08:00 | Enterprise Architect | 1h |
| 62 | 5.5 | Establish cloud KPIs |  | 2h | 2021-06-02 08:00 | 2021-06-02 10:00 |  | 53.5d |  | start no earlier than 2021-06-02 08:00 | Enterprise Architect | 2h |
| 63 | 5.6 | Obtain approval to proceed |  | 2h | 2021-06-02 08:00 | 2021-06-02 10:00 |  | 1.5d | 0.75d | start no earlier than 2021-06-02 08:00 | Enterprise Architect | 2h |
| 64 | 5.7 | Design complete | milestone | 0d | 2021-06-02 08:00 | 2021-06-02 08:00 |  | 1.75d | 1d | start no earlier than 2021-06-02 08:00 |  |  |
| 65 | 6 | **Development** |  | 12d? | 2021-06-03 08:00 | 2021-06-18 17:00 | 64 |  |  |  |  | 82.5h |
| 66 | 6.1 | Review functional specifications |  | 2h | 2021-06-03 08:00 | 2021-06-03 10:00 |  | 44.25d |  |  | Developer; Enterprise Architect | 4h |
| 67 | 6.2 | Assign development staff |  | 2h | 2021-06-03 08:00 | 2021-06-03 10:00 | 63 | 0.75d |  |  | Enterprise Architect; Functional Manager | 4h |
| 68 | 6.3 | **Provision Dev environment** |  | 6d? | 2021-06-04 08:00 | 2021-06-11 17:00 | 67 |  |  |  |  | 40.5h |
| 69 | 6.3.1 | **Clone and prepare EC2 instances** |  | 1d | 2021-06-04 08:00 | 2021-06-04 17:00 |  |  |  |  |  | 8h |
| 70 | 6.3.1.1 | Create images from the EC2 instances we intend to migrate |  | 1h | 2021-06-04 08:00 | 2021-06-04 09:00 |  | 9.12d | 2.88d |  | Developer | 1h |
| 71 | 6.3.1.2 | Create cloned instances from the EC2 instances we intend to migrate |  | 1h | 2021-06-04 08:00 | 2021-06-04 09:00 |  | 43.38d |  |  | Developer | 1h |
| 72 | 6.3.1.3 | Modify tags for identifying the cloned machines you want to migrate |  | 2h | 2021-06-04 08:00 | 2021-06-04 10:00 |  | 43.25d |  |  | Developer | 2h |
| 73 | 6.3.1.4 | Install the Migrate for Compute Engine Linux package to reconfigure Linux VMs for Google Cloud |  | 2h | 2021-06-04 08:00 | 2021-06-04 10:00 |  | 43.25d |  |  | Developer | 2h |
| 74 | 6.3.1.5 | Ensure that our cloned instances are not running |  | 2h | 2021-06-04 08:00 | 2021-06-04 10:00 |  | 43.25d |  |  | Developer | 2h |
| 75 | 6.3.2 | **Configure network, access, and space requirements** |  | 2d | 2021-06-07 08:00 | 2021-06-08 17:00 |  |  |  |  |  | 14h |
| 76 | 6.3.2.1 | Set up a Google Cloud Virtual Private Cloud |  | 1h | 2021-06-07 08:00 | 2021-06-07 09:00 |  | 42.38d |  |  | Developer | 1h |
| 77 | 6.3.2.2 | Set up networks, access, and firewall rules in migration environment |  | 1h | 2021-06-07 08:00 | 2021-06-07 09:00 |  | 42.38d |  |  | Developer | 1h |
| 78 | 6.3.2.3 | Create the Migrate for Compute Engine IAM group in AWS using the Configuration for AWS CloudFormation |  | 1h | 2021-06-07 08:00 | 2021-06-07 09:00 |  | 42.38d |  |  | Developer | 1h |
| 79 | 6.3.2.4 | Create the AWS IAM user account for Migrate for Compute Engine with programmatic access |  | 1h | 2021-06-07 08:00 | 2021-06-07 09:00 |  | 42.38d |  |  | Developer | 1h |
| 80 | 6.3.2.5 | Download the AWS IAM user CSV with the access keys and store securely |  | 1h | 2021-06-07 08:00 | 2021-06-07 09:00 |  | 42.38d |  |  | Developer | 1h |
| 81 | 6.3.2.6 | Create Google Cloud roles and service accounts via Cloud Shell |  | 2h | 2021-06-07 08:00 | 2021-06-07 10:00 |  | 42.25d |  |  | Developer | 2h |
| 82 | 6.3.2.7 | Create the IAM user account for Migrate for Compute Engine with the necessary roles and privileges |  | 1h | 2021-06-07 08:00 | 2021-06-07 09:00 |  | 42.38d |  |  | Developer | 1h |
| 83 | 6.3.2.8 | Create and configure the migration manager and migration manager passwords |  | 1h | 2021-06-08 08:00 | 2021-06-08 09:00 |  | 49.62d |  | start no earlier than 2021-06-08 08:00 | Developer | 1h |
| 84 | 6.3.2.9 | Allow https for the Migrate for Compute Engine Manager instance |  | 1h | 2021-06-08 08:00 | 2021-06-08 09:00 |  | 49.62d |  | start no earlier than 2021-06-08 08:00 | Developer | 1h |
| 85 | 6.3.2.10 | Configure logging from Migrate for Compute Engine Manager |  | 1h | 2021-06-08 08:00 | 2021-06-08 09:00 |  | 49.62d |  | start no earlier than 2021-06-08 08:00 | Developer | 1h |
| 86 | 6.3.2.11 | Configure AWS as a Migrate for Compute Engine source |  | 1h | 2021-06-08 08:00 | 2021-06-08 09:00 |  | 49.62d |  | start no earlier than 2021-06-08 08:00 | Developer | 1h |
| 87 | 6.3.2.12 | Configure GCP Compute Engine API quotas to allow the needed size persistent disk |  | 1h | 2021-06-08 08:00 | 2021-06-08 09:00 |  | 49.62d |  | start no earlier than 2021-06-08 08:00 | Developer | 1h |
| 88 | 6.3.2.13 | Set up Cloud Extensions |  | 1h | 2021-06-08 08:00 | 2021-06-08 09:00 |  | 49.62d |  | start no earlier than 2021-06-08 08:00 | Developer | 1h |

Notes:
- 72: nginx, application servers, instance runnign mongoDB, instances running the cron based workers, and the instance running the cron schedule broker all run on EC2

| ID | WBS | Task | Type | Duration | Start | Finish | Predecessors | Total slack | Free slack | Constraint | Resources | Work |
| --- | --- | --- | --- | --- | --- | --- | --- | --- | --- | --- | --- | --- |
| 89 | 6.3.3 | **Copy over nginx, application servers, workers, cron schedule broker, and redis page cache** |  | 1d? | 2021-06-09 08:00 | 2021-06-09 17:00 |  |  |  |  |  | 6h |
| 90 | 6.3.3.1 | Create a runbook |  | 1h | 2021-06-09 08:00 | 2021-06-09 09:00 |  | 40.38d |  |  | Developer | 1h |
| 91 | 6.3.3.2 | Edit the runbook to only include the server clones |  | 1h | 2021-06-09 08:00 | 2021-06-09 09:00 |  | 40.38d |  |  | Developer | 1h |
| 92 | 6.3.3.3 | Load the runbook into a new wave |  | 1h | 2021-06-09 08:00 | 2021-06-09 09:00 |  | 40.38d |  |  | Developer | 1h |
| 93 | 6.3.3.4 | Validate the wave |  | 1h | 2021-06-09 08:00 | 2021-06-09 09:00 |  | 40.38d |  |  | Developer | 1h |
| 94 | 6.3.3.5 | Create and start a Full migration job for the wave |  | 1h | 2021-06-09 08:00 | 2021-06-09 09:00 | 70 | 6.25d | 0d |  | Developer | 1h |
| 95 | 6.3.3.6 | Create and run the Detach job for the wave |  | 1h | 2021-06-09 08:00 | 2021-06-09 09:00 |  | 40.38d |  |  | Developer | 1h |
| 96 | 6.3.4 | Connect to the Redis instance from the Compute Engine VMs using redis-cli |  | 1h | 2021-06-09 09:00 | 2021-06-09 10:00 | 94 | 40.25d |  | start no earlier than 2021-05-13 08:00 | Developer | 1h |
| 97 | 6.3.5 | Configure internal http load balancing from proxy server to application servers |  | 1h | 2021-06-09 08:00 | 2021-06-09 09:00 |  | 48.62d |  | start no earlier than 2021-06-09 08:00 | Developer | 1h |
| 98 | 6.3.6 | **Configure pub/sub queue** |  | 1d? | 2021-06-10 08:00 | 2021-06-10 17:00 |  |  |  |  |  | 6.5h |
| 99 | 6.3.6.1 | Create a new topic in cloud pub/sub |  | 0.5h | 2021-06-10 08:00 | 2021-06-10 08:30 |  | 39.44d |  |  | Developer | 0.5h |
| 100 | 6.3.6.2 | Create a new subscription for each subscriber (cron based worker) |  | 1h | 2021-06-10 08:00 | 2021-06-10 09:00 | 94 | 39.38d |  |  | Developer | 1h |
| 101 | 6.3.6.3 | Create a pub/sub service account and assign pub/sub publisher and subscriber roles |  | 0.5h | 2021-06-10 08:00 | 2021-06-10 08:30 |  | 39.44d |  |  | Developer | 0.5h |
| 102 | 6.3.6.4 | Install the Cloud SDK |  | 1h | 2021-06-10 08:00 | 2021-06-10 09:00 | 94 | 39.38d |  |  | Developer | 1h |
| 103 | 6.3.6.5 | Get Python and set up a virtual environment |  | 1h | 2021-06-10 08:00 | 2021-06-10 09:00 | 94 | 39.38d |  |  | Developer | 1h |
| 104 | 6.3.6.6 | Create a Python virtual environment and activate it in terminals for the application server and every subscriber |  | 1h | 2021-06-10 08:00 | 2021-06-10 09:00 | 94 | 39.38d |  |  | Developer | 1h |
| 105 | 6.3.6.7 | Install the Pub/Sub Python client library using pip on each terminal |  | 1h | 2021-06-10 08:00 | 2021-06-10 09:00 | 94 | 39.38d |  |  | Developer | 1h |
| 106 | 6.3.6.8 | Start the subscriber applications |  | 0.25h | 2021-06-10 08:00 | 2021-06-10 08:15 | 94 | 39.47d |  |  | Developer | 0.25h |
| 107 | 6.3.6.9 | Start the Publisher application |  | 0.25h | 2021-06-10 08:00 | 2021-06-10 08:15 | 94 | 39.47d |  |  | Developer | 0.25h |
| 108 | 6.3.7 | Develop system performance monitoring, issue logging and reporting |  | 4h | 2021-06-11 08:00 | 2021-06-11 12:00 |  | 46.25d |  | start no earlier than 2021-06-11 08:00 | Enterprise Architect | 4h |
| 109 | 6.4 | **Unit Testing** |  | 3d | 2021-06-14 08:00 | 2021-06-16 17:00 |  |  |  |  |  | 17h |
| 110 | 6.4.1 | Review application functions |  | 1h | 2021-06-14 08:00 | 2021-06-14 09:00 |  | 37.38d |  |  | Developer; Enterprise Architect | 2h |
| 111 | 6.4.2 | Develop unit tests for applications |  | 2h | 2021-06-14 08:00 | 2021-06-14 10:00 | 94 | 3.38d | 0.75d |  | Developer | 2h |
| 112 | 6.4.3 | develop unit tests for cron based workers |  | 2h | 2021-06-14 08:00 | 2021-06-14 10:00 | 94 | 3.38d | 0.75d |  | Developer | 2h |
| 113 | 6.4.4 | develop unit tests for cron schedule broker |  | 2h | 2021-06-14 08:00 | 2021-06-14 10:00 | 94 | 3.38d | 0.75d |  | Developer | 2h |
| 114 | 6.4.5 | Run the full suite of unit tests for all applications |  | 2h | 2021-06-15 08:00 | 2021-06-15 10:00 | 111, 112, 113 | 2.62d | 0d | start no earlier than 2021-06-15 08:00 | Developer | 2h |
| 115 | 6.4.6 | Identify anomalies to product specifications |  | 1h | 2021-06-15 10:00 | 2021-06-15 11:00 | 114 | 2.62d | 0.62d |  | Developer | 1h |
| 116 | 6.4.7 | Modify implementation |  | 4h | 2021-06-16 08:00 | 2021-06-16 12:00 | 115 | 2d | 0d | start no earlier than 2021-06-16 08:00 | Developer | 4h |
| 117 | 6.4.8 | Re-test modified implementation |  | 2h | 2021-06-16 13:00 | 2021-06-16 15:00 | 116 | 2d | 0d | start no earlier than 2021-06-16 08:00 | Developer | 2h |
| 118 | 6.4.9 | Unit testing complete | milestone | 0d | 2021-06-16 15:00 | 2021-06-16 15:00 | 117 | 2d |  | start no earlier than 2021-05-19 08:00 |  |  |

Notes:
- 91: exclude the MongoDB instance

| ID | WBS | Task | Type | Duration | Start | Finish | Predecessors | Total slack | Free slack | Constraint | Resources | Work |
| --- | --- | --- | --- | --- | --- | --- | --- | --- | --- | --- | --- | --- |
| 119 | 6.5 | **Integration Testing** |  | 2d | 2021-06-17 08:00 | 2021-06-18 17:00 |  |  |  |  |  | 13h |
| 120 | 6.5.1 | Develop integration tests for application server integrations |  | 2h | 2021-06-17 08:00 | 2021-06-17 10:00 | 94 | 0.38d | 0d |  | Developer | 2h |
| 121 | 6.5.2 | Develop integration tests for cron based worker integrations |  | 2h | 2021-06-17 08:00 | 2021-06-17 10:00 | 94 | 0.38d | 0d |  | Developer | 2h |
| 122 | 6.5.3 | Run the full suite of integration tests to test component integration |  | 2h | 2021-06-17 10:00 | 2021-06-17 12:00 | 120, 121 | 0.38d | 0d |  | Developer | 2h |
| 123 | 6.5.4 | Identify anomalies to specifications |  | 1h | 2021-06-17 13:00 | 2021-06-17 14:00 | 122 | 0.38d |  | start no earlier than 2021-05-21 08:00 | Developer | 1h |
| 124 | 6.5.5 | Modify configurations |  | 4h | 2021-06-18 08:00 | 2021-06-18 12:00 | 123 | 0d |  | start no earlier than 2021-06-18 08:00 | Developer | 4h |
| 125 | 6.5.6 | Re-test modified implementation |  | 2h | 2021-06-18 13:00 | 2021-06-18 15:00 | 124 | 0d |  | start no earlier than 2021-05-21 08:00 | Developer | 2h |
| 126 | 6.5.7 | Integration testing complete | milestone | 0d | 2021-06-18 15:00 | 2021-06-18 15:00 | 125 | 0d |  | start no earlier than 2021-05-21 08:00 | Developer |  |
| 127 | 6.6 | Obtain approvals to proceed |  | 2h | 2021-06-18 15:00 | 2021-06-18 17:00 | 118, 126 | 0d |  | start no earlier than 2021-05-21 08:00 | Enterprise Architect; Project Sponsor | 4h |
| 128 | 6.7 | Development complete | milestone | 0d | 2021-06-18 17:00 | 2021-06-18 17:00 | 127 | 40.5d | 0d | start no earlier than 2021-05-21 08:00 |  |  |
| 129 | 7 | **Staging** |  | 29d? | 2021-06-21 08:00 | 2021-07-29 17:00 | 127 |  |  |  |  | 105.5h |
| 130 | 7.1 | **Provision staging environment** |  | 18.25d? | 2021-06-21 08:00 | 2021-07-15 10:00 |  |  |  |  |  | 62.5h |
| 131 | 7.1.1 | Create a bucket in your Google Cloud project |  | 1h | 2021-06-21 08:00 | 2021-06-21 09:00 |  | 32.38d |  |  | Developer | 1h |
| 132 | 7.1.2 | **import dev resources to staging environment** |  | 0.25d | 2021-06-21 08:00 | 2021-06-21 10:00 |  | 32.25d |  |  |  | 4h |
| 133 | 7.1.2.1 | import dev resources into terraform |  | 2h | 2021-06-21 08:00 | 2021-06-21 10:00 | 128 | 32.25d |  |  | Developer | 2h |
| 134 | 7.1.2.2 | create cloud deployment manager for deploying resources to the staging environment |  | 1h | 2021-06-21 08:00 | 2021-06-21 09:00 |  | 32.25d | 0d |  | Developer | 1h |
| 135 | 7.1.2.3 | deploy resources to the staging environment |  | 1h | 2021-06-21 09:00 | 2021-06-21 10:00 | 134 | 40.5d |  |  | Developer | 1h |
| 136 | 7.1.3 | **Configure MongoDB Atlas in GCP** |  | 1d? | 2021-06-22 08:00 | 2021-06-22 17:00 |  |  |  |  |  | 7h |
| 137 | 7.1.3.1 | mongodump from AWS |  | 2h | 2021-06-22 08:00 | 2021-06-22 10:00 |  | 31.25d |  |  | Developer | 2h |
| 138 | 7.1.3.2 | copy the binary to the GCP bucket |  | 1h | 2021-06-22 08:00 | 2021-06-22 09:00 |  | 31.38d |  |  | Developer | 1h |
| 139 | 7.1.3.3 | copy the binary to the MongoDB |  | 1h | 2021-06-22 08:00 | 2021-06-22 09:00 |  | 31.38d |  |  | Developer | 1h |
| 140 | 7.1.3.4 | mongorestore in GCP |  | 2h | 2021-06-22 08:00 | 2021-06-22 10:00 |  | 31.25d |  |  | Developer | 2h |
| 141 | 7.1.3.5 | register MongoDB service |  | 1h | 2021-06-22 08:00 | 2021-06-22 09:00 |  | 27.88d | 3.88d |  | Developer | 1h |
| 142 | 7.1.4 | **Configure the Postgres Cloud SQL database** |  | 1d? | 2021-06-23 08:00 | 2021-06-23 17:00 |  |  |  |  |  | 7h |
| 143 | 7.1.4.1 | Set up PostgreSQL in Google Cloud |  | 0.5h | 2021-06-23 08:00 | 2021-06-23 08:30 |  | 30.44d |  |  | Developer | 0.5h |
| 144 | 7.1.4.2 | Take a full backup from the running master server using pg_dump |  | 2h | 2021-06-23 08:00 | 2021-06-23 10:00 |  | 30.25d |  |  | Developer | 2h |
| 145 | 7.1.4.3 | Transfer the backup to the GCP bucket |  | 1h | 2021-06-23 08:00 | 2021-06-23 09:00 |  | 30.38d |  |  | Developer | 1h |
| 146 | 7.1.4.4 | Transfer the backup file to the Google Cloud Postgres master |  | 1h | 2021-06-23 08:00 | 2021-06-23 09:00 |  | 30.38d |  |  | Developer | 1h |
| 147 | 7.1.4.5 | pg_restore the backup file into the Google Cloud master |  | 2h | 2021-06-23 08:00 | 2021-06-23 10:00 |  | 30.25d |  |  | Developer | 2h |
| 148 | 7.1.4.6 | Register the PostgreSQL service |  | 0.5h | 2021-06-23 08:00 | 2021-06-23 08:30 |  | 26.94d | 2.94d |  | Developer | 0.5h |

| ID | WBS | Task | Type | Duration | Start | Finish | Predecessors | Total slack | Free slack | Constraint | Resources | Work |
| --- | --- | --- | --- | --- | --- | --- | --- | --- | --- | --- | --- | --- |
| 149 | 7.1.5 | **Copy a snapshot of the Elasticsearch cluster** |  | 1d? | 2021-06-24 08:00 | 2021-06-24 17:00 |  |  |  |  |  | 6.75h |
| 150 | 7.1.5.1 | Purchase Elasticsearch managed service in GCP |  | 0.25h | 2021-06-24 08:00 | 2021-06-24 08:15 |  | 29.47d |  |  | Developer | 0.25h |
| 151 | 7.1.5.2 | From the Elasticsearch Service Console, create a new deployment |  | 1h | 2021-06-24 08:00 | 2021-06-24 09:00 |  | 29.38d |  |  | Developer | 1h |
| 152 | 7.1.5.3 | Allow TCP traffic on port 9243 |  | 0.5h | 2021-06-24 08:00 | 2021-06-24 08:30 |  | 29.44d |  |  | Developer | 0.5h |
| 153 | 7.1.5.4 | register GCP cloud storage bucket as a snapshot repository |  | 0.5h | 2021-06-24 08:00 | 2021-06-24 08:30 |  | 29.44d |  |  | Developer | 0.5h |
| 154 | 7.1.5.5 | Verify the repository |  | 0.5h | 2021-06-24 08:00 | 2021-06-24 08:30 |  | 29.44d |  |  | Developer | 0.5h |
| 155 | 7.1.5.6 | Create a snapshot from AWS |  | 2h | 2021-06-24 08:00 | 2021-06-24 10:00 |  | 29.25d |  |  | Developer | 2h |
| 156 | 7.1.5.7 | Restore the snapshot in the GCP cluster |  | 2h | 2021-06-24 08:00 | 2021-06-24 10:00 |  | 25.75d | 1.75d |  | Developer | 2h |
| 157 | 7.1.6 | **Transfer the S3 bucket** |  | 1d? | 2021-06-25 08:00 | 2021-06-25 17:00 |  |  |  |  |  | 7.75h |
| 158 | 7.1.6.1 | Create an AWS IAM transfer user |  | 0.25h | 2021-06-25 08:00 | 2021-06-25 08:15 |  | 28.47d |  |  | Developer | 0.25h |
| 159 | 7.1.6.2 | Give the AWS IAM user the ability to perform the necessary transfer actions |  | 1h | 2021-06-25 08:00 | 2021-06-25 09:00 |  | 28.38d |  |  | Developer | 1h |
| 160 | 7.1.6.3 | Create at least one access/secret key pair for the transfer job |  | 1h | 2021-06-25 08:00 | 2021-06-25 09:00 |  | 28.38d |  |  | Developer | 1h |
| 161 | 7.1.6.4 | Restore any objects that are archived to Amazon Glacier |  | 0.5h | 2021-06-25 08:00 | 2021-06-25 08:30 |  | 28.44d |  |  | Developer | 0.5h |
| 162 | 7.1.6.5 | Create GCP Cloud storage bucket |  | 0.5h | 2021-06-25 08:00 | 2021-06-25 08:30 |  | 28.44d |  |  | Developer | 0.5h |
| 163 | 7.1.6.6 | Make your Cloud Storage bucket public |  | 0.5h | 2021-06-25 08:00 | 2021-06-25 08:30 |  | 28.44d |  |  | Developer | 0.5h |
| 164 | 7.1.6.7 | Reserve an external IP address |  | 0.5h | 2021-06-25 08:00 | 2021-06-25 08:30 |  | 28.44d |  |  | Developer | 0.5h |
| 165 | 7.1.6.8 | Create the external HTTP(S) load balancer |  | 1h | 2021-06-25 08:00 | 2021-06-25 09:00 |  | 28.38d |  |  | Developer | 1h |
| 166 | 7.1.6.9 | Set up the transfer job on the transfer page to run |  | 2h | 2021-06-25 08:00 | 2021-06-25 10:00 |  | 24.88d | 0.75d |  | Developer | 2h |
| 167 | 7.1.6.10 | Send https://assets.postmedia.com traffic to your backend bucket |  | 0.5h | 2021-06-25 08:00 | 2021-06-25 08:30 |  | 28.44d |  |  | Developer | 0.5h |
| 168 | 7.1.7 | **Integration Testing** |  | 3d | 2021-06-28 08:00 | 2021-06-30 17:00 |  |  |  |  |  | 18h |
| 169 | 7.1.7.1 | Develop integration tests for MongoDB |  | 2h | 2021-06-28 08:00 | 2021-06-28 10:00 | 141 | 24d | 0.75d |  | Developer | 2h |
| 170 | 7.1.7.2 | Develop Integration tests for PostgreSQL |  | 2h | 2021-06-28 08:00 | 2021-06-28 10:00 | 148 | 24d | 0.75d |  | Developer | 2h |
| 171 | 7.1.7.3 | Develop integration tests for Elasticsearch cluster |  | 2h | 2021-06-28 08:00 | 2021-06-28 10:00 | 156 | 24d | 0.75d |  | Developer | 2h |
| 172 | 7.1.7.4 | Test resolving cloud storage files |  | 2h | 2021-06-28 08:00 | 2021-06-28 10:00 | 166 | 35.5d |  | start no earlier than 2021-06-28 08:00 | Developer | 2h |
| 173 | 7.1.7.5 | Run the full suite of integration tests to test component integration |  | 3h | 2021-06-29 08:00 | 2021-06-29 11:00 | 169, 170, 171 | 31.5d | 0d | start no earlier than 2021-06-29 08:00 | Developer | 3h |
| 174 | 7.1.7.6 | Identify anomalies to specifications |  | 1h | 2021-06-29 11:00 | 2021-06-29 12:00 | 173 | 31.5d | 0d | start no earlier than 2021-06-02 08:00 | Developer | 1h |
| 175 | 7.1.7.7 | Modify configurations |  | 4h | 2021-06-29 13:00 | 2021-06-29 17:00 | 174 | 31.5d | 0d | start no earlier than 2021-06-02 08:00 | Developer | 4h |
| 176 | 7.1.7.8 | Re-test modified implementation |  | 2h | 2021-06-30 08:00 | 2021-06-30 10:00 | 175 | 31.5d | 0d | start no earlier than 2021-06-02 08:00 | Developer | 2h |
| 177 | 7.1.7.9 | Integration testing complete | milestone | 0h | 2021-06-30 10:00 | 2021-06-30 10:00 | 176 | 33.5d |  | start no earlier than 2021-06-02 08:00 |  |  |

| ID | WBS | Task | Type | Duration | Start | Finish | Predecessors | Total slack | Free slack | Constraint | Resources | Work |
| --- | --- | --- | --- | --- | --- | --- | --- | --- | --- | --- | --- | --- |
| 178 | 7.1.8 | **End-to-end testing** |  | 2d | 2021-07-01 08:00 | 2021-07-02 17:00 |  |  |  |  |  | 11h |
| 179 | 7.1.8.1 | Develop end-to-end tests and test plans based on architecture specifications |  | 2h | 2021-07-01 08:00 | 2021-07-01 10:00 | 141, 148, 156, 166 | 21.12d | 0d |  | Developer | 2h |
| 180 | 7.1.8.2 | Run end-to-end scenarios |  | 2h | 2021-07-01 10:00 | 2021-07-01 12:00 | 179 | 21.12d | 0d |  | Developer | 2h |
| 181 | 7.1.8.3 | Identify anomalies to specification |  | 1h | 2021-07-01 13:00 | 2021-07-01 14:00 | 180 | 21.12d | 0d | start no earlier than 2021-06-04 08:00 | Developer | 1h |
| 182 | 7.1.8.4 | Modify configurations |  | 4h | 2021-07-01 14:00 | 2021-07-02 09:00 | 181 | 21.12d | 0d | start no earlier than 2021-06-04 08:00 | Developer | 4h |
| 183 | 7.1.8.5 | Re-test modified implementation |  | 2h | 2021-07-02 09:00 | 2021-07-02 11:00 | 182 | 21.12d | 0d | start no earlier than 2021-06-04 08:00 | Developer | 2h |
| 184 | 7.1.8.6 | End-to-end testing complete | milestone | 0h | 2021-07-02 11:00 | 2021-07-02 11:00 | 183 | 21.12d | 0.62d | start no earlier than 2021-06-04 08:00 |  |  |
| 185 | 7.2 | **Pilot** |  | 6d | 2021-07-05 08:00 | 2021-07-12 17:00 | 176, 184 |  |  |  |  | 39h |
| 186 | 7.2.1 | Identify test group |  | 4h | 2021-07-01 08:00 | 2021-07-01 12:00 |  | 32.25d |  | start no earlier than 2021-07-01 08:00 | Enterprise Architect | 4h |
| 187 | 7.2.2 | Configure environment to allow user interaction for testing |  | 2h | 2021-07-05 08:00 | 2021-07-05 10:00 |  | 30.5d |  | start no earlier than 2021-07-05 08:00 | Developer | 2h |
| 188 | 7.2.3 | Start running staging environment |  | 1h | 2021-07-05 08:00 | 2021-07-05 09:00 |  | 30.62d |  | start no earlier than 2021-07-05 08:00 | Developer | 1h |
| 189 | 7.2.4 | Perform pilot and test all identified scenarios |  | 5h | 2021-07-05 08:00 | 2021-07-05 14:00 |  | 30.12d |  | start no earlier than 2021-07-05 08:00 | Enterprise Architect; Testers | 10h |
| 190 | 7.2.5 | Obtain user feedback |  | 2h | 2021-07-05 08:00 | 2021-07-05 10:00 |  | 30.5d |  | start no earlier than 2021-07-05 08:00 | Enterprise Architect; Testers | 4h |
| 191 | 7.2.6 | Evaluate performance and functionality |  | 2h | 2021-07-06 08:00 | 2021-07-06 10:00 |  | 29.5d |  | start no earlier than 2021-07-06 08:00 | Enterprise Architect | 2h |
| 192 | 7.2.7 | Make necessary changes to the code base based on evaluation |  | 16h | 2021-07-06 08:00 | 2021-07-07 17:00 |  | 27.75d |  | start no earlier than 2021-07-06 08:00 | Developer | 16h |
| 193 | 7.2.8 | Pilot complete | milestone | 0h | 2021-07-07 08:00 | 2021-07-07 08:00 |  | 28.75d |  | start no earlier than 2021-07-07 08:00 |  |  |
| 194 | 7.3 | Obtain approvals to proceed |  | 2h | 2021-07-08 08:00 | 2021-07-08 10:00 |  | 27.25d | 0d | start no earlier than 2021-07-08 08:00 | Enterprise Architect; Project Sponsor | 4h |
| 195 | 7.4 | Staging complete | milestone | 0h | 2021-07-08 10:00 | 2021-07-08 10:00 | 194 | 27.5d |  | finish no earlier than 2021-06-10 17:00 |  |  |
| 196 | 8 | **Production** |  | 18.5d? | 2021-07-09 08:00 | 2021-08-04 12:00 |  |  |  |  |  | 73.75h |
| 197 | 8.1 | **Documentation and Training** |  | 3d | 2021-07-09 08:00 | 2021-07-13 17:00 |  |  |  |  |  | 40h |
| 198 | 8.1.1 | Determine post go live resource needs |  | 2h | 2021-07-09 08:00 | 2021-07-09 10:00 |  | 26.5d |  | start no earlier than 2021-07-09 08:00 | Enterprise Architect; Functional Manager | 4h |
| 199 | 8.1.2 | Prepare production runbook |  | 2h | 2021-07-09 08:00 | 2021-07-09 10:00 |  | 26.5d |  | start no earlier than 2021-07-09 08:00 | Developer; Enterprise Architect | 4h |
| 200 | 8.1.3 | Review production runbook |  | 1h | 2021-07-09 08:00 | 2021-07-09 09:00 |  | 26.62d |  | start no earlier than 2021-07-09 08:00 | Developer; Enterprise Architect | 2h |
| 201 | 8.1.4 | Incorporate troubleshooting documentation feedback |  | 1h | 2021-07-09 08:00 | 2021-07-09 09:00 |  | 26.62d |  | start no earlier than 2021-07-09 08:00 | Enterprise Architect | 1h |
| 202 | 8.1.5 | Review deployment methodology |  | 1h | 2021-07-09 08:00 | 2021-07-09 09:00 |  | 26.62d |  | start no earlier than 2021-07-09 08:00 | Developer; Enterprise Architect | 2h |
| 203 | 8.1.6 | Review rollout plan |  | 1h | 2021-07-12 08:00 | 2021-07-12 09:00 |  | 25.62d |  | start no earlier than 2021-07-12 08:00 | Developer; Enterprise Architect | 2h |
| 204 | 8.1.7 | Review rollback strategy |  | 1h | 2021-07-12 08:00 | 2021-07-12 09:00 |  | 25.62d |  | start no earlier than 2021-07-12 08:00 | Developer; Enterprise Architect | 2h |
| 205 | 8.1.8 | Define rollout strategy |  | 1h | 2021-07-12 08:00 | 2021-07-12 09:00 |  | 25.62d |  | start no earlier than 2021-07-12 08:00 | Enterprise Architect | 1h |
| 206 | 8.1.9 | Confirm changeover window |  | 1h | 2021-07-12 08:00 | 2021-07-12 09:00 |  | 25.62d |  | start no earlier than 2021-07-12 08:00 | Enterprise Architect; Technical Staff | 2h |
| 207 | 8.1.10 | Secure deployment resources |  | 1h | 2021-07-12 08:00 | 2021-07-12 09:00 |  | 25.62d |  | start no earlier than 2021-07-12 08:00 | Enterprise Architect; Functional Manager | 2h |
| 208 | 8.1.11 | Train maintenance team members |  | 6h | 2021-07-13 08:00 | 2021-07-13 15:00 |  | 24d |  | start no earlier than 2021-07-13 08:00 | Enterprise Architect; Functional Manager; Technical Staff | 18h |
| 209 | 8.1.12 | Documentation complete | milestone | 0h | 2021-07-13 08:00 | 2021-07-13 08:00 |  | 24.75d |  | start no earlier than 2021-07-13 08:00 |  |  |
| 210 | 8.2 | Confirm go/no go decision |  | 1h | 2021-07-13 08:00 | 2021-07-13 09:00 |  | 24.62d |  | start no earlier than 2021-07-13 08:00 | Enterprise Architect; Project Sponsor | 2h |

| ID | WBS | Task | Duration | Start | Finish | Predecessors | Total slack | Free slack | Constraint | Resources | Work |
| --- | --- | --- | --- | --- | --- | --- | --- | --- | --- | --- | --- |
| 211 | 8.3 | **Provision production environment** | 4d? | 2021-07-14 08:00 | 2021-07-19 17:00 |  |  |  |  |  | 14.75h |
| 212 | 8.3.1 | import staging resources into terraform | 1h | 2021-07-14 08:00 | 2021-07-14 09:00 | 194 | 23.5d | 0d | start no earlier than 2021-07-14 08:00 | Developer | 1h |
| 213 | 8.3.2 | create cloud deployment manager for deploying resources to the production environment | 0.5h | 2021-07-14 09:00 | 2021-07-14 09:30 | 212 | 23.5d | 0d | start no earlier than 2021-06-16 08:00 | Developer | 0.5h |
| 214 | 8.3.3 | deploy resources to the production environment | 0.5h | 2021-07-14 09:30 | 2021-07-14 10:00 | 213 | 23.5d |  | start no earlier than 2021-06-16 08:00 | Developer | 0.5h |
| 215 | 8.3.4 | **Migrate Postgres to GCP cloud SQL** | 1d? | 2021-07-15 08:00 | 2021-07-15 17:00 |  |  |  |  |  | 3h |
| 216 | 8.3.4.1 | Allow data replication through VPN | 1h | 2021-07-15 08:00 | 2021-07-15 09:00 |  | 22.62d |  | start no earlier than 2021-07-15 08:00 | Developer | 1h |
| 217 | 8.3.4.2 | Set up Postgres SQL replication with AWS as the MASTER and GCP as the SLAVE | 1h | 2021-07-15 08:00 | 2021-07-15 09:00 |  | 22.62d |  | start no earlier than 2021-07-15 08:00 | Developer | 1h |
| 218 | 8.3.4.3 | When data replication is completed, promote GCP to the MASTER | 1h | 2021-07-15 08:00 | 2021-07-15 09:00 |  | 22.25d | 2d | start no earlier than 2021-07-15 08:00 | Developer | 1h |
| 219 | 8.3.5 | **Migrate GCP MongoDB Atlas** | 1d | 2021-07-16 08:00 | 2021-07-16 17:00 |  |  |  |  |  | 3.75h |
| 220 | 8.3.5.1 | Launch the same number of source instances as AWS MongoDB replica set | 0.5h | 2021-07-16 08:00 | 2021-07-16 08:30 |  | 21.69d |  | start no earlier than 2021-07-16 08:00 | Developer | 0.5h |
| 221 | 8.3.5.2 | Update bindIp of new launch instances to use private Ip of instance and restart new mongo instances | 0.25h | 2021-07-16 08:00 | 2021-07-16 08:15 |  | 21.72d |  | start no earlier than 2021-07-16 08:00 | Developer | 0.25h |
| 222 | 8.3.5.3 | Login to the primary instance and add all GCP instances as a replica wait until stateStr becomes SECONDARY state for all GCP instances | 1h | 2021-07-16 08:00 | 2021-07-16 09:00 |  | 21.62d |  | start no earlier than 2021-07-16 08:00 | Developer | 1h |
| 223 | 8.3.5.4 | Update route53 host to point to GCP | 0.25h | 2021-07-16 08:00 | 2021-07-16 08:15 |  | 21.72d |  | start no earlier than 2021-07-16 08:00 | Developer | 0.25h |
| 224 | 8.3.5.5 | redeploy all mongodb clients to refresh DNS entries in case of any caching | 0.5h | 2021-07-16 08:00 | 2021-07-16 08:30 |  | 21.69d |  | start no earlier than 2021-07-16 08:00 | Developer | 0.5h |
| 225 | 8.3.5.6 | set GCP replicas priority higher than AWS and give voting rights to GCP replicas | 0.5h | 2021-07-16 08:00 | 2021-07-16 08:30 |  | 21.69d |  | start no earlier than 2021-07-16 08:00 | Developer | 0.5h |
| 226 | 8.3.5.7 | Remove the AWS replicas from the set | 0.25h | 2021-07-16 08:00 | 2021-07-16 08:15 |  | 21.72d |  | start no earlier than 2021-07-16 08:00 | Developer | 0.25h |
| 227 | 8.3.5.8 | Initiate leader election and step down the old AWS primary | 0.25h | 2021-07-16 08:00 | 2021-07-16 08:15 |  | 21.72d |  | start no earlier than 2021-07-16 08:00 | Developer | 0.25h |
| 228 | 8.3.5.9 | Remove the final AWS instance from the set | 0.25h | 2021-07-16 08:00 | 2021-07-16 08:15 |  | 21.34d | 1.09d | start no earlier than 2021-07-16 08:00 | Developer | 0.25h |
| 229 | 8.3.6 | **reindex ElasticSearch cluster** | 8h | 2021-07-19 08:00 | 2021-07-19 17:00 |  |  |  |  |  | 6h |
| 230 | 8.3.6.1 | Add the reindex.remote.whitelist user setting to the AWS Elasticsearch cluster | 1h | 2021-07-19 08:00 | 2021-07-19 09:00 |  | 20.62d |  | start no earlier than 2021-07-19 08:00 | Developer | 1h |
| 231 | 8.3.6.2 | Allow TCP traffic on port 9243 | 1h | 2021-07-19 08:00 | 2021-07-19 09:00 |  | 20.62d |  | start no earlier than 2021-07-19 08:00 | Developer | 1h |
| 232 | 8.3.6.3 | From the API Console create the destination index on Elasticsearch Service | 1h | 2021-07-19 08:00 | 2021-07-19 09:00 |  | 20.62d |  | start no earlier than 2021-07-19 08:00 | Developer | 1h |
| 233 | 8.3.6.4 | Copy the index from the remote cluster | 1h | 2021-07-19 08:00 | 2021-07-19 09:00 |  | 20.62d |  | start no earlier than 2021-07-19 08:00 | Developer | 1h |
| 234 | 8.3.6.5 | When the reindex job completes, set the refresh_interval and number_of_replicas to the desired values | 1h | 2021-07-19 08:00 | 2021-07-19 09:00 |  | 20.62d |  | start no earlier than 2021-07-19 08:00 | Developer | 1h |
| 235 | 8.3.6.6 | Once reindexing is complete and the status of the new index is green, you can delete the old index | 1h | 2021-07-19 08:00 | 2021-07-19 09:00 |  | 20.25d | 0d | start no earlier than 2021-07-19 08:00 | Developer | 1h |
| 236 | 8.4 | Run test suites in production for sanity check | 2h | 2021-07-19 09:00 | 2021-07-19 11:00 | 218, 228, 235 | 20.25d | 0.62d | start no earlier than 2021-07-19 08:00 | Developer | 2h |

| ID | WBS | Task | Type | Duration | Start | Finish | Predecessors | Total slack | Free slack | Constraint | Resources | Work |
| --- | --- | --- | --- | --- | --- | --- | --- | --- | --- | --- | --- | --- |
| 237 | 8.5 | **Deployment** |  | 8h | 2021-07-20 08:00 | 2021-07-20 17:00 | 236 |  |  |  |  | 6h |
| 238 | 8.5.1 | Set up 50/50 weighted DNS in Route 53 for both platforms |  | 1h | 2021-07-20 08:00 | 2021-07-20 09:00 |  | 19.62d |  | start no earlier than 2021-07-20 08:00 | Developer | 1h |
| 239 | 8.5.2 | Create a GCP managed zone |  | 1h | 2021-07-20 08:00 | 2021-07-20 09:00 |  | 19.62d |  | start no earlier than 2021-07-20 08:00 | Developer | 1h |
| 240 | 8.5.3 | Export your DNS configuration from AWS |  | 1h | 2021-07-20 08:00 | 2021-07-20 09:00 |  | 19.62d |  | start no earlier than 2021-07-20 08:00 | Developer | 1h |
| 241 | 8.5.4 | Import the record set in GCP |  | 1h | 2021-07-20 08:00 | 2021-07-20 09:00 |  | 19.62d |  | start no earlier than 2021-07-20 08:00 | Developer | 1h |
| 242 | 8.5.5 | Verify DNS propagation |  | 1h | 2021-07-20 08:00 | 2021-07-20 09:00 |  | 19.62d |  | start no earlier than 2021-07-20 08:00 | Developer | 1h |
| 243 | 8.5.6 | Update your registrar's name server records |  | 1h | 2021-07-20 08:00 | 2021-07-20 09:00 |  | 19.62d |  | start no earlier than 2021-07-20 08:00 | Developer | 1h |
| 244 | 8.6 | Complete post go-live validation |  | 4h | 2021-07-21 08:00 | 2021-07-21 12:00 |  | 17.62d | 0d | start no earlier than 2021-07-21 08:00 | Enterprise Architect | 4h |
| 245 | 8.7 | Remove managed zones in AWS |  | 5h | 2021-07-21 13:00 | 2021-07-22 09:00 | 244 | 17.62d |  | start no earlier than 2021-07-21 08:00 | Developer | 5h |
| 246 | 8.8 | Production complete | milestone | 0h | 2021-07-21 08:00 | 2021-07-21 08:00 |  | 18.75d |  | start no earlier than 2021-07-21 08:00 |  |  |
| 247 | 9 | **Post Implementation Review** |  | 2d | 2021-07-22 08:00 | 2021-07-23 17:00 |  |  |  |  |  | 18h |
| 248 | 9.1 | Get acceptance of deliverables |  | 1h | 2021-07-22 08:00 | 2021-07-22 09:00 |  | 17.38d | 2.88d | start no earlier than 2021-07-22 08:00 | Enterprise Architect; Project Sponsor | 2h |
| 249 | 9.2 | Evaluate stakeholder satisfaction |  | 1h | 2021-07-22 08:00 | 2021-07-22 09:00 |  | 17.62d |  | start no earlier than 2021-07-22 08:00 | Enterprise Architect | 1h |
| 250 | 9.3 | Review project goals, timeline, budget, success metrics, and major events |  | 1h | 2021-07-23 08:00 | 2021-07-23 09:00 |  | 16.62d |  | start no earlier than 2021-07-23 08:00 | Enterprise Architect; Developer; Functional Manager | 3h |
| 251 | 9.4 | Discuss what worked and what can be improved for future projects |  | 2h | 2021-07-23 08:00 | 2021-07-23 10:00 |  | 8.25d |  | start no earlier than 2021-07-23 08:00 | Enterprise Architect; Developer; Functional Manager; Project Sponsor | 8h |
| 252 | 9.5 | Document lessons learned and create action plan to address feedback |  | 2h | 2021-07-23 08:00 | 2021-07-23 10:00 |  | 16.5d |  | start no earlier than 2021-07-23 08:00 | Enterprise Architect | 2h |
| 253 | 9.6 | Distribute to team members |  | 2h | 2021-07-23 08:00 | 2021-07-23 10:00 |  | 16.5d |  | start no earlier than 2021-07-23 08:00 | Enterprise Architect | 2h |
| 254 | 9.7 | Post implementation review complete | milestone | 0d | 2021-07-23 08:00 | 2021-07-23 08:00 |  | 16.75d |  | start no earlier than 2021-07-23 08:00 |  |  |
| 255 | 10 | **Handover to business and maintenance team** |  | 2d | 2021-07-26 08:00 | 2021-07-27 17:00 |  |  |  |  |  | 34h |
| 256 | 10.1 | Reassign resources |  | 2h | 2021-07-26 08:00 | 2021-07-26 10:00 |  | 15.5d |  | start no earlier than 2021-07-26 08:00 | Enterprise Architect; Functional Manager | 4h |
| 257 | 10.2 | Identify key roles and responsibilities for maintenance |  | 2h | 2021-07-26 08:00 | 2021-07-26 10:00 |  | 15.5d |  | start no earlier than 2021-07-26 08:00 | Enterprise Architect; Functional Manager | 4h |
| 258 | 10.3 | Provide supporting documentation |  | 2h | 2021-07-26 08:00 | 2021-07-26 10:00 |  | 15.5d |  | start no earlier than 2021-07-26 08:00 | Enterprise Architect; Functional Manager | 4h |
| 259 | 10.4 | Walk the team through the day to day of the maintenance |  | 4h | 2021-07-27 08:00 | 2021-07-27 12:00 |  | 6d |  | start no earlier than 2021-07-27 08:00 | Enterprise Architect; Functional Manager; Technical Staff | 12h |
| 260 | 10.5 | Kickoff maintenance teamwork |  | 2h | 2021-07-27 08:00 | 2021-07-27 10:00 |  | 6.25d |  | start no earlier than 2021-07-27 08:00 | Enterprise Architect; Functional Manager; Technical Staff | 6h |
| 261 | 10.6 | Reconfigure weighted DNS to GCP only |  | 2h | 2021-07-27 08:00 | 2021-07-27 10:00 | 248 | 14.5d |  | start no earlier than 2021-07-27 08:00 | Developer | 2h |
| 262 | 10.7 | Decommission AWS resources |  | 2h | 2021-07-27 08:00 | 2021-07-27 10:00 | 248 | 14.5d |  | start no earlier than 2021-07-27 08:00 | Developer | 2h |
| 263 | 11 | Project end | milestone | 0d | 2021-07-27 08:00 | 2021-07-27 08:00 |  | 14.75d |  | start no earlier than 2021-07-27 08:00 |  |  |
